| TaskID | TaskName | StartDate | EndDate | Duration | Progress | DurationUnit | resources | Predecessor | info |
| --- | --- | --- | --- | --- | --- | --- | --- | --- | --- |
| 1000 | Anforderungen | 2026-04-06T06:00:00.000Z | 2026-04-27T15:00:00.000Z | 16 | 0 | day |  |  |  |
| 1001 | · Kick-off Meeting | 2026-04-06T06:00:00.000Z | 2026-04-06T15:00:00.000Z | 1 | 0 | day | Peter Müller Peter Müller 100, Anna Bauer Anna Bauer 100, Thomas Keller Thomas Keller 100 |  |  |
| 1002 | · Stakeholder-Interviews | 2026-04-07T06:00:00.000Z | 2026-04-09T15:00:00.000Z | 3 | 0 | day | Anna Bauer Anna Bauer 100, Thomas Keller Thomas Keller 100 | 1001FS |  |
| 1003 | · IST-Analyse | 2026-04-07T06:00:00.000Z | 2026-04-09T15:00:00.000Z | 3 | 0 | day | Anna Bauer Anna Bauer 100 | 1001FS |  |
| 1004 | · Risikobewertung | 2026-04-07T06:00:00.000Z | 2026-04-08T15:00:00.000Z | 2 | 0 | day | Peter Müller Peter Müller 100 | 1001FS |  |
| 1005 | · Projektplan erstellen | 2026-04-09T06:00:00.000Z | 2026-04-10T15:00:00.000Z | 2 | 0 | day | Peter Müller Peter Müller 100 | 1004FS |  |
| 1006 | · Anforderungsworkshop | 2026-04-10T06:00:00.000Z | 2026-04-13T15:00:00.000Z | 2 | 0 | day | Anna Bauer Anna Bauer 100, Thomas Keller Thomas Keller 100 | 1002FS,1003FS |  |
| 1007 | · Use Cases erstellen | 2026-04-14T06:00:00.000Z | 2026-04-16T15:00:00.000Z | 3 | 0 | day | Anna Bauer Anna Bauer 100 | 1006FS |  |
| 1008 | · Technische Anforderungen dokumentieren | 2026-04-14T06:00:00.000Z | 2026-04-17T15:00:00.000Z | 4 | 0 | day | Thomas Keller Thomas Keller 100 | 1006FS |  |
| 1009 | · Fachliche Anforderungen dokumentieren | 2026-04-17T06:00:00.000Z | 2026-04-21T15:00:00.000Z | 3 | 0 | day | Anna Bauer Anna Bauer 100 | 1007FS |  |
| 1010 | · Anforderungsvalidierung | 2026-04-22T06:00:00.000Z | 2026-04-23T15:00:00.000Z | 2 | 0 | day | Anna Bauer Anna Bauer 100, Thomas Keller Thomas Keller 100 | 1008FS,1009FS |  |
| 1012 | · Anforderungen Review | 2026-04-24T06:00:00.000Z | 2026-04-27T15:00:00.000Z | 2 | 0 | day | Anna Bauer Anna Bauer 100, Thomas Keller Thomas Keller 100, Peter Müller Peter Müller 100 | 1010FS |  |
| 1013 | · Anforderungen freigeben | 2026-04-27T15:00:00.000Z | 2026-04-27T15:00:00.000Z | 0 | 0 | day |  | 1012FS | Meilenstein: Alle Anforderungen freigegeben – Design startet. |
| 2000 | Design | 2026-04-28T06:00:00.000Z | 2026-05-14T15:00:00.000Z | 13 | 0 | day |  |  |  |
| 2001 | · System-Architektur entwerfen | 2026-04-28T06:00:00.000Z | 2026-05-01T15:00:00.000Z | 4 | 0 | day | Thomas Keller Thomas Keller 100, Felix Wagner Felix Wagner 100 | 1013FS |  |
| 2002 | · Datenbankdesign | 2026-04-28T06:00:00.000Z | 2026-04-30T15:00:00.000Z | 3 | 0 | day | Jonas Weber Jonas Weber 100 | 1013FS |  |
| 2003 | · UI/UX Konzept | 2026-04-28T06:00:00.000Z | 2026-05-01T15:00:00.000Z | 4 | 0 | day | Sandra Huber Sandra Huber 100 | 1013FS |  |
| 2004 | · Sicherheitskonzept | 2026-05-04T06:00:00.000Z | 2026-05-05T15:00:00.000Z | 2 | 0 | day | Thomas Keller Thomas Keller 100 | 2001FS |  |
| 2005 | · API-Design | 2026-05-04T06:00:00.000Z | 2026-05-06T15:00:00.000Z | 3 | 0 | day | Felix Wagner Felix Wagner 100, Thomas Keller Thomas Keller 100 | 2001FS |  |
| 2006 | · Wireframes erstellen | 2026-05-04T06:00:00.000Z | 2026-05-07T15:00:00.000Z | 4 | 0 | day | Sandra Huber Sandra Huber 100, Michael Schmid Michael Schmid 100 | 2003FS |  |
| 2007 | · Technisches Konzept | 2026-05-07T06:00:00.000Z | 2026-05-11T15:00:00.000Z | 3 | 0 | day | Felix Wagner Felix Wagner 100, Thomas Keller Thomas Keller 100 | 2004FS,2005FS |  |
| 2008 | · Prototyp erstellen | 2026-05-08T06:00:00.000Z | 2026-05-12T15:00:00.000Z | 3 | 0 | day | Sandra Huber Sandra Huber 100, Michael Schmid Michael Schmid 100 | 2006FS |  |
| 2009 | · Testkonzept erstellen | 2026-04-28T06:00:00.000Z | 2026-04-30T15:00:00.000Z | 3 | 0 | day | Klaus Richter Klaus Richter 100 | 1013FS |  |
| 2010 | · Deployment-Konzept | 2026-05-01T06:00:00.000Z | 2026-05-04T15:00:00.000Z | 2 | 0 | day | Jonas Weber Jonas Weber 100 | 2002FS |  |
| 2011 | · Design Review | 2026-05-13T06:00:00.000Z | 2026-05-14T15:00:00.000Z | 2 | 0 | day | Sandra Huber Sandra Huber 100, Thomas Keller Thomas Keller 100, Felix Wagner Felix Wagner 100 | 2008FS,2007FS |  |
| 2012 | · Design freigeben | 2026-05-14T15:00:00.000Z | 2026-05-14T15:00:00.000Z | 0 | 0 | day |  | 2011FS | Meilenstein: Design freigegeben – Realisierung startet. |
| 3000 | Realisation | 2026-05-15T06:00:00.000Z | 2026-06-26T15:00:00.000Z | 31 | 0 | day |  |  |  |
| 3001 | · Entwicklungsumgebung einrichten | 2026-05-15T06:00:00.000Z | 2026-05-18T15:00:00.000Z | 2 | 0 | day | Felix Wagner Felix Wagner 100 | 2012FS |  |
| 3002 | · CI/CD Pipeline einrichten | 2026-05-15T06:00:00.000Z | 2026-05-18T15:00:00.000Z | 2 | 0 | day | Jonas Weber Jonas Weber 100 | 2012FS |  |
| 3003 | · Frontend Grundstruktur | 2026-05-15T06:00:00.000Z | 2026-05-18T15:00:00.000Z | 2 | 0 | day | Michael Schmid Michael Schmid 100 | 2012FS |  |
| 3004 | · Datenbankimplementierung | 2026-05-19T06:00:00.000Z | 2026-05-22T15:00:00.000Z | 4 | 0 | day | Jonas Weber Jonas Weber 100 | 3002FS |  |
| 3005 | · Backend-Grundstruktur | 2026-05-19T06:00:00.000Z | 2026-05-22T15:00:00.000Z | 4 | 0 | day | Felix Wagner Felix Wagner 100 | 3001FS |  |
| 3006 | · UI Komponenten entwickeln | 2026-05-19T06:00:00.000Z | 2026-05-22T15:00:00.000Z | 4 | 0 | day | Michael Schmid Michael Schmid 100, Sandra Huber Sandra Huber 100 | 3003FS |  |
| 3007 | · Benutzerauthentifizierung | 2026-05-25T06:00:00.000Z | 2026-05-27T15:00:00.000Z | 3 | 0 | day | Felix Wagner Felix Wagner 100 | 3005FS |  |
| 3008 | · Stammdatenverwaltung | 2026-05-25T06:00:00.000Z | 2026-05-28T15:00:00.000Z | 4 | 0 | day | Jonas Weber Jonas Weber 100 | 3004FS |  |
| 3009 | · Benutzeroberfläche Modul A | 2026-05-25T06:00:00.000Z | 2026-05-29T15:00:00.000Z | 5 | 0 | day | Michael Schmid Michael Schmid 100 | 3006FS |  |
| 3010 | · Benutzeroberfläche Modul B | 2026-05-25T06:00:00.000Z | 2026-05-29T15:00:00.000Z | 5 | 0 | day | Lena Hoffmann Lena Hoffmann 100 | 3006FS |  |
| 3011 | · Benutzerverwaltung Backend | 2026-05-28T06:00:00.000Z | 2026-06-01T15:00:00.000Z | 3 | 0 | day | Felix Wagner Felix Wagner 100 | 3007FS |  |
| 3012 | · Geschäftslogik Modul B | 2026-05-25T06:00:00.000Z | 2026-05-29T15:00:00.000Z | 5 | 0 | day | Laura Fischer Laura Fischer 100 | 3005FS |  |
| 3013 | · Geschäftslogik Modul C | 2026-06-01T06:00:00.000Z | 2026-06-04T15:00:00.000Z | 4 | 0 | day | Laura Fischer Laura Fischer 100 | 3012FS |  |
| 3014 | · Benutzeroberfläche Modul C | 2026-06-01T06:00:00.000Z | 2026-06-03T15:00:00.000Z | 3 | 0 | day | Lena Hoffmann Lena Hoffmann 100 | 3010FS |  |
| 3015 | · Geschäftslogik Modul A | 2026-06-02T06:00:00.000Z | 2026-06-08T15:00:00.000Z | 5 | 0 | day | Felix Wagner Felix Wagner 100 | 3011FS |  |
| 3016 | · Reportingmodul | 2026-06-05T06:00:00.000Z | 2026-06-10T15:00:00.000Z | 4 | 0 | day | Laura Fischer Laura Fischer 100, Jonas Weber Jonas Weber 100 | 3008FS,3013FS |  |
| 3017 | · API Endpoints implementieren | 2026-06-09T06:00:00.000Z | 2026-06-15T15:00:00.000Z | 5 | 0 | day | Felix Wagner Felix Wagner 100, Laura Fischer Laura Fischer 100 | 3015FS |  |
| 3018 | · Datenmigration | 2026-05-29T06:00:00.000Z | 2026-06-02T15:00:00.000Z | 3 | 0 | day | Jonas Weber Jonas Weber 100 | 3008FS |  |
| 3019 | · Integration Backend/Frontend | 2026-06-16T06:00:00.000Z | 2026-06-19T15:00:00.000Z | 4 | 0 | day | Felix Wagner Felix Wagner 100, Michael Schmid Michael Schmid 100 | 3017FS,3009FS,3014FS |  |
| 3020 | · Performance-Optimierung | 2026-06-22T06:00:00.000Z | 2026-06-24T15:00:00.000Z | 3 | 0 | day | Felix Wagner Felix Wagner 100 | 3019FS |  |
| 3021 | · Code Review | 2026-06-25T06:00:00.000Z | 2026-06-26T15:00:00.000Z | 2 | 0 | day | Felix Wagner Felix Wagner 100, Laura Fischer Laura Fischer 100 | 3020FS |  |
| 3022 | · Entwicklung abgeschlossen | 2026-06-26T15:00:00.000Z | 2026-06-26T15:00:00.000Z | 0 | 0 | day |  | 3021FS | Meilenstein: Entwicklung abgeschlossen – Testing startet. |
| 4000 | Testing | 2026-06-29T06:00:00.000Z | 2026-07-28T15:00:00.000Z | 22 | 0 | day |  |  |  |
| 4001 | · Testumgebung einrichten | 2026-06-29T06:00:00.000Z | 2026-06-29T15:00:00.000Z | 1 | 0 | day | Klaus Richter Klaus Richter 100 | 3022FS |  |
| 4002 | · Unit Tests erstellen | 2026-06-30T06:00:00.000Z | 2026-07-02T15:00:00.000Z | 3 | 0 | day | Felix Wagner Felix Wagner 100, Laura Fischer Laura Fischer 100 | 4001FS |  |
| 4003 | · Integrationstest | 2026-07-03T06:00:00.000Z | 2026-07-08T15:00:00.000Z | 4 | 0 | day | Klaus Richter Klaus Richter 100, Maria Schneider Maria Schneider 100 | 4002FS |  |
| 4004 | · Systemtest | 2026-07-09T06:00:00.000Z | 2026-07-15T15:00:00.000Z | 5 | 0 | day | Klaus Richter Klaus Richter 100, Maria Schneider Maria Schneider 100 | 4003FS |  |
| 4005 | · Performancetest | 2026-07-16T06:00:00.000Z | 2026-07-20T15:00:00.000Z | 3 | 0 | day | Klaus Richter Klaus Richter 100 | 4004FS |  |
| 4006 | · Sicherheitstest | 2026-07-16T06:00:00.000Z | 2026-07-20T15:00:00.000Z | 3 | 0 | day | Maria Schneider Maria Schneider 100 | 4004FS |  |
| 4007 | · Fehlerbehebung Runde 1 | 2026-07-16T06:00:00.000Z | 2026-07-21T15:00:00.000Z | 4 | 0 | day | Felix Wagner Felix Wagner 100, Laura Fischer Laura Fischer 100 | 4004FS |  |
| 4008 | · Usability Test | 2026-07-16T06:00:00.000Z | 2026-07-20T15:00:00.000Z | 3 | 0 | day | Sandra Huber Sandra Huber 100, Maria Schneider Maria Schneider 100 | 4004FS |  |
| 4009 | · Regressionstests | 2026-07-21T06:00:00.000Z | 2026-07-22T15:00:00.000Z | 2 | 0 | day | Klaus Richter Klaus Richter 100, Maria Schneider Maria Schneider 100 | 4005FS,4006FS,4008FS |  |
| 4010 | · Retest | 2026-07-22T06:00:00.000Z | 2026-07-24T15:00:00.000Z | 3 | 0 | day | Klaus Richter Klaus Richter 100 | 4007FS |  |
| 4011 | · Fehlerbehebung Runde 2 | 2026-07-22T06:00:00.000Z | 2026-07-24T15:00:00.000Z | 3 | 0 | day | Felix Wagner Felix Wagner 100 | 4007FS |  |
| 4012 | · Test Report erstellen | 2026-07-27T06:00:00.000Z | 2026-07-28T15:00:00.000Z | 2 | 0 | day | Klaus Richter Klaus Richter 100 | 4009FS,4010FS |  |
| 4013 | · Testing abgeschlossen | 2026-07-28T15:00:00.000Z | 2026-07-28T15:00:00.000Z | 0 | 0 | day |  | 4012FS,4011FS | Meilenstein: Testing abgeschlossen – Abnahme startet. |
| 5000 | Abnahme | 2026-07-29T06:00:00.000Z | 2026-08-13T15:00:00.000Z | 12 | 0 | day |  |  |  |
| 5001 | · Benutzerhandbuch erstellen | 2026-07-29T06:00:00.000Z | 2026-07-31T15:00:00.000Z | 3 | 0 | day | Sandra Huber Sandra Huber 100, Anna Bauer Anna Bauer 100 | 4013FS |  |
| 5002 | · Schulungsunterlagen | 2026-08-03T06:00:00.000Z | 2026-08-04T15:00:00.000Z | 2 | 0 | day | Sandra Huber Sandra Huber 100 | 5001FS |  |
| 5003 | · Abnahmetest vorbereiten | 2026-07-29T06:00:00.000Z | 2026-07-30T15:00:00.000Z | 2 | 0 | day | Maria Schneider Maria Schneider 100, Anna Bauer Anna Bauer 100 | 4013FS |  |
| 5004 | · Abnahmetest durchführen | 2026-07-31T06:00:00.000Z | 2026-08-04T15:00:00.000Z | 3 | 0 | day | Anna Bauer Anna Bauer 100, Klaus Richter Klaus Richter 100 | 5003FS |  |
| 5005 | · Abnahmedokumentation | 2026-08-05T06:00:00.000Z | 2026-08-06T15:00:00.000Z | 2 | 0 | day | Anna Bauer Anna Bauer 100 | 5004FS |  |
| 5006 | · Endabnahme Review | 2026-08-07T06:00:00.000Z | 2026-08-07T15:00:00.000Z | 1 | 0 | day | Peter Müller Peter Müller 100, Anna Bauer Anna Bauer 100 | 5005FS,5002FS |  |

| TaskID | TaskName | StartDate | EndDate | Duration | Progress | DurationUnit | resources | Predecessor | info |
| --- | --- | --- | --- | --- | --- | --- | --- | --- | --- |
| 5007 | · Produktionsdeployment | 2026-08-10T06:00:00.000Z | 2026-08-10T15:00:00.000Z | 1 | 0 | day | Jonas Weber Jonas Weber 100, Felix Wagner Felix Wagner 100 | 5006FS |  |
| 5008 | · Go-Live Vorbereitung | 2026-08-10T06:00:00.000Z | 2026-08-10T15:00:00.000Z | 1 | 0 | day | Peter Müller Peter Müller 100 | 5006FS |  |
| 5009 | · Go-Live | 2026-08-10T15:00:00.000Z | 2026-08-10T15:00:00.000Z | 0 | 0 | day |  | 5007FS,5008FS | Meilenstein: System erfolgreich in Produktion – Go-Live! |
| 5010 | · Post-Launch Support | 2026-08-11T06:00:00.000Z | 2026-08-13T15:00:00.000Z | 3 | 0 | day | Felix Wagner Felix Wagner 100, Laura Fischer Laura Fischer 100, Klaus Richter Klaus Richter 100 | 5009FS |  |

Links (from, to):
- 8 12
- 13 17
